# Simple Project Plan

How a schedule from MS Project changed from version to version. A marks actual dates.

## Version 1 (saved 2016-11-30)

| ID | WBS | Task | Duration | Start | Finish | Predecessors | Complete | Total float | Constraint |
| --- | --- | --- | --- | --- | --- | --- | --- | --- | --- |
| 1 | 1 | **Projekt Dobby** | 1002d? | 2016-04-04 A | 2017-05-29 |  | 47% | 0d |  |
| 2 | 1.1 | **App** | 778.12d | 2016-04-06 A | 2017-03-17 |  | 36% | 210d |  |
| 3 | 1.1.1 | **Version 1** | 82.12d | 2016-04-06 A | 2016-05-03 A |  | 100% |  |  |
| 4 |  | Informationsbeschaffung | 20d | 2016-04-06 A | 2016-05-03 A | 101 | 100% |  | start no earlier than 2016-04-04 |
| 5 |  | Grundgerüst | 7d | 2016-04-06 A | 2016-04-14 A | 101 | 100% |  | start no earlier than 2016-04-04 |
| 6 |  | Einloggen | 1d | 2016-04-15 A | 2016-04-15 A | 5 | 100% |  |  |
| 7 |  | Menü | 4d | 2016-04-18 A | 2016-04-21 A | 6 | 100% |  |  |
| 8 |  | Verbinden | 2d | 2016-04-22 A | 2016-04-25 A | 7, 39 | 100% |  |  |
| 9 |  | Kommunizieren | 1d | 2016-04-26 A | 2016-04-26 A | 8 | 100% |  |  |
| 10 | 1.1.2 | **Version 2** | 463.12d | 2016-10-03 A | 2017-03-17 |  | 24% | 210d |  |
| 11 |  | Informationsbeschaffung | 115d | 2016-10-03 A | 2017-03-10 | 9 | 40% | 231d | start no earlier than 2016-10-03 |
| 12 |  | Grundgerüst | 14d | 2016-12-05 | 2016-12-22 | 9 |  | 84d | start no earlier than 2016-12-05 |
| 13 |  | Verbindung/Kommunikation | 3d | 2016-12-23 | 2016-12-27 | 12 |  | 112d |  |
| 14 |  | Einloggen | 3d | 2016-12-28 | 2016-12-30 | 13 |  | 123d |  |
| 15 |  | Konsole [Entwickler] | 3d | 2017-01-02 | 2017-01-04 | 14 |  | 117d |  |
| 16 |  | Moduswahl | 7d | 2017-01-05 | 2017-01-13 | 15 |  | 123d |  |
| 17 |  | 3D Modell | 35d | 2017-01-19 | 2017-03-08 | 20 |  | 120d |  |
| 18 |  | Kamerabild Anzeige | 7d | 2017-03-09 | 2017-03-17 | 17, 34 |  | 120d |  |
| 19 | 1.1.2.9 | **Steuerelemente** | 7.12d | 2017-01-16 | 2017-01-18 |  |  | 117d |  |
| 20 |  | Joystick | 3d | 2017-01-16 | 2017-01-18 | 16 |  | 117d |  |
| 21 |  | App abgeschlossen | 0d | 2017-03-17 | 2017-03-17 | 18 |  | 121.88d |  |
| 22 | 1.2 | **RaspberryPi** | 673.12d | 2016-04-04 A | 2017-02-08 |  | 49% | 232.88d |  |
| 23 | 1.2.1 | **Sensor** | 391.12d | 2016-04-18 A | 2016-11-09 A |  | 100% |  |  |
| 24 |  | Informationsbeschaffung | 5d | 2016-04-18 A | 2016-04-22 A | 39 | 100% |  |  |
| 25 |  | Konfiguration | 2d | 2016-04-25 A | 2016-04-26 A | 24 | 100% |  |  |
| 26 |  | Verbindung [Ethernet] | 2d | 2016-04-27 A | 2016-04-28 A | 25 | 100% |  |  |
| 27 |  | Werte auswerten | 5d | 2016-04-29 A | 2016-05-05 A | 26 | 100% |  |  |
| 28 |  | Sensor de-/aktivieren | 3d | 2016-11-07 A | 2016-11-09 A | 27 | 100% |  | start no earlier than 2016-11-07 |
| 29 | 1.2.2 | **Object Tracking** | 184.12d | 2016-11-28 A | 2017-02-08 |  | 4% | 204d |  |
| 30 |  | Informationsbeschaffung | 10d | 2016-11-28 A | 2016-12-09 | 28 | 20% | 174d | start no earlier than 2016-11-27 |
| 31 |  | Kamera einbinden | 2d | 2016-12-12 | 2016-12-13 | 30 |  | 168d |  |
| 32 |  | Bild erzeugen | 2d | 2016-12-14 | 2016-12-15 | 31 |  | 174d |  |
| 33 |  | Bild auswerten | 35d | 2016-12-16 | 2017-02-02 | 32 |  | 175d |  |
| 34 |  | Bild versenden | 4d | 2017-02-03 | 2017-02-08 | 33 |  | 204d |  |
| 35 | 1.2.3 | **Verbindung** | 34.12d | 2016-04-04 A | 2016-04-15 A |  | 100% |  |  |
| 36 |  | Informationsbeschaffung | 5d | 2016-04-04 A | 2016-04-08 A |  | 100% |  |  |
| 37 |  | AccessPoint | 2d | 2016-04-11 A | 2016-04-12 A | 36 | 100% |  |  |
| 38 |  | Schnittstellenkonfiguration | 1d | 2016-04-13 A | 2016-04-13 A | 37 | 100% |  |  |
| 39 |  | WebSocket | 2d | 2016-04-14 A | 2016-04-15 A | 38 | 100% |  |  |
| 40 |  | Konfiguration | 220d | 2016-04-04 A | 2017-02-03 |  | 52% | 246d |  |
| 41 |  | Updates | 220d | 2016-04-04 A | 2017-02-03 |  | 50% | 246d |  |
| 42 |  | Fehlerbehebung | 220d | 2016-04-04 A | 2017-02-03 |  | 50% | 246d |  |
| 43 |  | RaspberryPi abgeschlossen | 0d | 2017-02-08 | 2017-02-08 | 34, 40, 41, 42 |  | 232.88d |  |
| 44 | 1.3 | **Motoren** | 385.12d | 2016-04-04 A | 2016-10-24 |  | 88% | 609d |  |
| 45 |  | Grundlagen [Informationen] | 20d | 2016-04-04 A | 2016-04-29 A |  | 100% |  |  |
| 46 | 1.3.2 | **Transceiver** | 52.12d | 2016-05-02 A | 2016-05-19 A |  | 100% |  |  |
| 47 |  | Entwurf | 3d | 2016-05-02 A | 2016-05-04 A | 45 | 100% |  |  |
| 48 |  | Montage | 1d | 2016-05-05 A | 2016-05-05 A | 47 | 100% |  |  |
| 49 |  | Systemtest | 6d | 2016-05-06 A | 2016-05-13 A | 48 | 100% |  |  |
| 50 |  | Fehlerbehebung | 10d | 2016-05-06 A | 2016-05-19 A | 48 | 100% |  |  |
| 51 | 1.3.3 | **Ansteuerung** | 112.12d | 2016-07-04 A | 2016-10-24 |  | 82% | 609d |  |
| 52 |  | Implementierung | 70d | 2016-07-04 A | 2016-10-07 | 50 | 80% | 660d | start no earlier than 2016-07-04 |
| 53 |  | Integration in das Hauptprogramm | 1d | 2016-10-10 A | 2016-10-10 A | 52 | 100% |  |  |
| 54 |  | Systemtest | 10d | 2016-10-11 A | 2016-10-24 | 53 | 90% | 519d |  |
| 55 |  | Fehlerbehebung | 6d | 2016-10-11 A | 2016-10-18 | 53 | 90% | 537d |  |
| 56 |  | Motoren abgeschlossen | 0d | 2016-10-24 | 2016-10-24 | 55, 54 |  | 520.88d |  |
| 57 | 1.4 | **Mechanik** | 532.12d | 2016-04-04 A | 2016-12-12 |  | 90% | 462d |  |
| 58 |  | Konzeptionierung | 20d | 2016-04-04 A | 2016-04-29 A |  | 100% |  |  |
| 59 |  | Materialauslegung | 40d | 2016-05-02 A | 2016-06-24 A | 58 | 100% |  |  |
| 60 | 1.4.3 | **Montage** | 259.12d | 2016-06-27 A | 2016-12-05 |  | 85% | 6d |  |
| 61 |  | Antriebsstrang | 2d | 2016-06-29 A | 2016-06-30 A | 63 | 100% |  |  |
| 62 |  | Holzverkleidung | 2d | 2016-07-01 A | 2016-07-04 A | 61 | 100% |  |  |
| 63 |  | Chassis | 2d | 2016-06-27 A | 2016-06-28 A | 59 | 100% |  |  |
| 64 |  | Sensor | 2d | 2016-07-05 A | 2016-07-06 A | 62 | 100% |  |  |
| 65 |  | RaspberryPi | 2d | 2016-07-11 A | 2016-07-12 A | 66 | 100% |  |  |
| 66 |  | Kamera | 2d | 2016-07-07 A | 2016-07-08 A | 64 | 100% |  |  |
| 67 |  | Akkus | 5d | 2016-11-29 A | 2016-12-05 | 65 | 50% | 6d | start no earlier than 2016-11-29 |
| 68 |  | Fehlerbehebung | 5d | 2016-12-06 A | 2016-12-12 | 67 | 40% | 462d |  |
| 69 |  | Systemtest | 5d | 2016-12-06 A | 2016-12-12 | 67 | 40% | 462d |  |
| 70 | 1.5 | **Elektronik** | 532.12d | 2016-04-04 A | 2016-12-12 |  | 89% | 462d |  |

| ID | WBS | Task | Duration | Start | Finish | Predecessors | Complete | Total float | Constraint |
| --- | --- | --- | --- | --- | --- | --- | --- | --- | --- |
| 71 |  | Konzeptionierung | 20d | 2016-04-04 A | 2016-04-29 A |  | 100% |  |  |
| 72 |  | Materialauslegung | 40d | 2016-05-02 A | 2016-06-24 | 71 | 95% | 750d |  |
| 73 | 1.5.3 | **Montage** | 25.12d | 2016-06-27 A | 2016-07-05 |  | 99% | 717d |  |
| 74 |  | Reihenklemmen | 1d | 2016-06-27 A | 2016-06-27 A | 72 | 100% |  |  |
| 75 |  | Verdrahtung | 2d | 2016-06-28 A | 2016-06-29 | 74 | 95% | 735d |  |
| 76 |  | Steckermontage | 1d | 2016-06-30 A | 2016-06-30 A | 75 | 100% |  |  |
| 77 |  | Ladegerät | 3d | 2016-07-01 A | 2016-07-05 A | 76 | 100% |  |  |
| 78 |  | Systemtest | 5d | 2016-12-06 A | 2016-12-12 | 77 | 40% | 462d | start no earlier than 2016-12-06 |
| 79 |  | Fehlerbehebung | 5d | 2016-12-06 A | 2016-12-12 | 77 | 40% | 462d | start no earlier than 2016-12-06 |
| 80 | 1.6 | **Kontrolle** | 490.12d | 2016-10-25 | 2017-04-17 |  |  | 117d |  |
| 81 | 1.6.1 | **Testen** | 304.12d | 2017-01-02 | 2017-04-13 |  |  | 129d |  |
| 82 | 1.6.1.1 | **App** | 238.12d | 2017-01-02 | 2017-03-22 |  |  | 195d |  |
| 83 |  | Cucumber | 52d | 2017-01-02 | 2017-03-14 | 14 |  | 219d |  |
| 84 |  | Monkey | 3d | 2017-03-20 | 2017-03-22 | 21 |  | 195d |  |
| 85 |  | Unit Test | 52d | 2017-01-02 | 2017-03-14 | 14 |  | 219d |  |
| 86 |  | Testszenarien (Tauglichkeit) | 10d | 2017-03-31 | 2017-04-13 | 90 |  | 120d |  |
| 87 |  | Systemtest | 5d | 2017-03-20 | 2017-03-24 | 21, 43, 56 |  | 114d |  |
| 88 |  | RaspberryPi | 10d | 2017-02-09 | 2017-02-22 | 43 |  | 279d |  |
| 89 | 1.6.2 | **Prüfen** | 436.12d | 2016-10-25 | 2017-03-30 |  |  | 171d |  |
| 90 |  | Geschwindigkeitsprüfung | 2d | 2017-03-29 | 2017-03-30 | 92, 93 |  | 120d |  |
| 91 |  | Belastungsprüfung | 1d | 2016-12-06 | 2016-12-06 | 67, 65 |  | 471d |  |
| 92 |  | Stromprüfung | 2d | 2017-03-27 | 2017-03-28 | 87 |  | 114d |  |
| 93 |  | Spannungsprüfung | 2d | 2017-03-27 | 2017-03-28 | 87 |  | 114d |  |
| 94 |  | Sensorprüfung | 1d | 2017-02-09 | 2017-02-09 | 43 |  | 312d |  |
| 95 |  | Frame-Prüfung | 2d | 2016-10-25 | 2016-10-26 | 56 |  | 603d |  |
| 96 | 1.6.3 | **Messen** | 361.12d | 2016-12-07 | 2017-04-17 |  |  | 117d |  |
| 97 |  | Terrainunterschiede | 3d | 2017-04-14 | 2017-04-17 | 86 |  | 117d |  |
| 98 |  | Sensorgenauigkeit | 2d | 2017-02-10 | 2017-02-13 | 94 |  | 306d |  |
| 99 |  | Belastungsmessung | 3d | 2016-12-07 | 2016-12-09 | 91 |  | 471d |  |
| 100 | 1.7 | **Dokumentation** | 1002d? | 2016-04-04 A | 2017-05-29 |  | 9% | 0d |  |
| 101 |  | Logo | 2d | 2016-04-04 A | 2016-04-05 A |  | 100% |  |  |
| 102 |  | Schriftliche Ausarbeitung | 90d | 2016-12-27 A | 2017-04-28 | 101 | 7% | 84d | start no earlier than 2016-12-27 |
| 103 |  | Zwischenstand | 0d | 2017-01-10 | 2017-01-10 |  |  |  | start no earlier than 2017-01-10 |
| 104 |  | Projektabschluss | 0d | 2017-04-15 | 2017-04-15 |  |  |  | start no earlier than 2017-04-15 |
| 105 |  | Abgabe Studienarbeit | 0d | 2017-05-15 | 2017-05-15 |  |  |  | start no earlier than 2017-05-15 |
| 106 |  | Notenabgabe Studienarbeit | 0d | 2017-05-29 | 2017-05-29 |  |  |  | start no earlier than 2017-05-29 |

## Version 2 (saved 2017-02-21)

Note of the change: Update des Projektstandes

Last finish stays 2017-05-29. Complete tasks 34 → 40.

Changed:

| ID | Task | Start | Finish | Complete | Total float | Predecessors |
| --- | --- | --- | --- | --- | --- | --- |
| 1 | **Projekt Dobby** |  |  | 47% → 51% |  |  |
| 2 | **App** |  |  | 36% → 52% |  |  |
| 10 | **Version 2** |  |  | 24% → 43% |  |  |
| 11 | Informationsbeschaffung |  |  | 40% → 50% |  |  |
| 12 | Grundgerüst | 2016-12-05 A |  | 0% → 80% | 84d → 452.12d |  |
| 13 | Verbindung/Kommunikation | 2016-12-23 A | 2016-12-27 A | 0% → 100% | 112d → none |  |
| 15 | Konsole [Entwickler] | 2017-01-02 A | 2017-01-04 A | 0% → 100% | 117d → none |  |
| 16 | Moduswahl | 2017-01-05 A | 2017-01-13 A | 0% → 100% | 123d → none |  |
| 22 | **RaspberryPi** |  |  | 49% → 50% | 232.88d → 321d |  |
| 29 | **Object Tracking** |  |  | 4% → 8% | 204d → 321d |  |
| 31 | Kamera einbinden | 2016-12-12 A | 2016-12-13 A | 0% → 100% | 168d → none |  |
| 32 | Bild erzeugen | 2016-12-14 A |  | 0% → 5% |  |  |
| 40 | Konfiguration |  |  | 52% → 53% |  |  |
| 44 | **Motoren** |  |  | 88% → 89% |  |  |
| 51 | **Ansteuerung** |  |  | 82% → 84% |  |  |
| 52 | Implementierung |  |  | 80% → 83% |  |  |
| 57 | **Mechanik** |  |  | 90% → 94% |  |  |
| 60 | **Montage** |  | 2016-12-05 A | 85% → 100% | 6d → none |  |
| 67 | Akkus |  | 2016-12-05 A | 50% → 100% | 6d → none |  |
| 68 | Fehlerbehebung |  |  | 40% → 50% |  |  |
| 69 | Systemtest |  |  | 40% → 50% |  |  |
| 91 | Belastungsprüfung |  |  |  |  | 67, 65 → 67 |
| 100 | **Dokumentation** |  |  | 9% → 12% |  |  |
| 102 | Schriftliche Ausarbeitung |  |  | 7% → 10% |  |  |
| 103 | Zwischenstand | 2017-01-10 A | 2017-01-10 A | 0% → 100% |  |  |

## Version 3 (saved 2017-03-02)

Note of the change: Update des Projektstandes

Last finish stays 2017-05-29.

Changed:

| ID | Task | Start | Complete | Total float |
| --- | --- | --- | --- | --- |
| 1 | **Projekt Dobby** |  | 51% → 52% |  |
| 2 | **App** |  | 52% → 53% |  |
| 10 | **Version 2** |  | 43% → 45% |  |
| 17 | 3D Modell | 2017-01-19 A | 0% → 5% |  |
| 19 | **Steuerelemente** | 2017-01-16 A | 0% → 50% | 117d → 5.75d |
| 20 | Joystick | 2017-01-16 A | 0% → 50% | 117d → 5.75d |
| 29 | **Object Tracking** |  | 8% → 9% |  |
| 32 | Bild erzeugen |  | 5% → 50% |  |
| 40 | Konfiguration |  | 53% → 54% |  |
| 44 | **Motoren** |  | 89% → 90% |  |
| 51 | **Ansteuerung** |  | 84% → 86% |  |
| 52 | Implementierung |  | 83% → 85% |  |
| 100 | **Dokumentation** |  | 12% → 17% |  |
| 102 | Schriftliche Ausarbeitung |  | 10% → 15% |  |

## Version 4 (saved 2017-03-07)

Note of the change: Merge remote-tracking branch 'origin/master'

Last finish stays 2017-05-29.

Added:

| ID | Task | Duration | Start | Finish | Constraint |
| --- | --- | --- | --- | --- | --- |
| 104 | Status-Quo | 0d | 2017-03-28 | 2017-03-28 | start no earlier than 2017-03-28 |

Changed:

| ID | Task | Start | Complete | Total float | Other |
| --- | --- | --- | --- | --- | --- |
| 2 | **App** |  | 53% → 54% |  |  |
| 17 | 3D Modell |  | 5% → 8% |  |  |
| 19 | **Steuerelemente** |  | 50% → 60% | 5.75d → 14.8d |  |
| 20 | Joystick |  | 50% → 60% | 5.75d → 14.8d |  |
| 22 | **RaspberryPi** |  | 50% → 51% |  |  |
| 29 | **Object Tracking** |  | 9% → 24% |  |  |
| 30 | Informationsbeschaffung |  | 20% → 25% |  |  |
| 32 | Bild erzeugen |  | 50% → 60% | 174d → 0.88d |  |
| 33 | Bild auswerten | 2016-12-16 A | 0% → 20% | 175d → 207d |  |
| 100 | **Dokumentation** |  | 17% → 20% |  |  |
| 102 | Schriftliche Ausarbeitung |  | 15% → 18% |  |  |
| 107 | Notenabgabe Studienarbeit |  |  |  | constraint start no earlier than 2017-05-29 → none |

## Version 5 (saved 2017-03-14)

Note of the change: Update des Projektstandes

Last finish stays 2017-05-29.

Changed:

| ID | Task | Start | Complete | Total float |
| --- | --- | --- | --- | --- |
| 1 | **Projekt Dobby** |  | 52% → 57% |  |
| 10 | **Version 2** |  | 45% → 46% |  |
| 19 | **Steuerelemente** |  | 60% → 85% |  |
| 20 | Joystick |  | 60% → 85% |  |
| 22 | **RaspberryPi** |  | 51% → 59% |  |
| 29 | **Object Tracking** |  | 24% → 32% |  |
| 30 | Informationsbeschaffung |  | 25% → 30% |  |
| 32 | Bild erzeugen |  | 60% → 65% | 0.88d → 11.38d |
| 33 | Bild auswerten |  | 20% → 30% | 207d → 2.08d |
| 34 | Bild versenden | 2017-02-03 A | 0% → 5% |  |
| 40 | Konfiguration |  | 54% → 58% |  |
| 41 | Updates |  | 50% → 60% |  |
| 42 | Fehlerbehebung |  | 50% → 60% |  |
| 44 | **Motoren** |  | 90% → 93% |  |
| 51 | **Ansteuerung** |  | 86% → 90% |  |
| 52 | Implementierung |  | 85% → 90% |  |
| 54 | Systemtest |  | 90% → 92% |  |
| 55 | Fehlerbehebung |  | 90% → 92% |  |
| 68 | Fehlerbehebung |  | 50% → 52% |  |
| 69 | Systemtest |  | 50% → 52% |  |
| 70 | **Elektronik** |  | 89% → 90% |  |
| 72 | Materialauslegung |  | 95% → 96% |  |
| 78 | Systemtest |  | 40% → 42% |  |
| 79 | Fehlerbehebung |  | 40% → 42% |  |
| 100 | **Dokumentation** |  | 20% → 23% |  |
| 102 | Schriftliche Ausarbeitung |  | 18% → 21% |  |

## Version 6 (saved 2017-03-28)

Note of the change: Update der Projektplanung

Last finish stays 2017-05-29. Complete tasks 40 → 46.

Changed:

| ID | Task | Start | Finish | Complete | Total float |
| --- | --- | --- | --- | --- | --- |
| 1 | **Projekt Dobby** |  |  | 57% → 67% |  |
| 2 | **App** |  |  | 54% → 80% |  |
| 10 | **Version 2** |  |  | 46% → 76% |  |
| 11 | Informationsbeschaffung |  |  | 50% → 85% |  |
| 12 | Grundgerüst |  |  | 80% → 95% |  |
| 14 | Einloggen | 2016-12-28 A | 2016-12-30 A | 0% → 100% | 228d → none |
| 17 | 3D Modell |  |  | 8% → 25% | 120d → 23.12d |
| 18 | Kamerabild Anzeige | 2017-03-09 A |  | 0% → 75% | 120d → 8.75d |
| 19 | **Steuerelemente** |  | 2017-01-18 A | 85% → 100% | 14.8d → none |
| 20 | Joystick |  | 2017-01-18 A | 85% → 100% | 14.8d → none |
| 22 | **RaspberryPi** |  |  | 59% → 71% |  |
| 29 | **Object Tracking** |  |  | 32% → 62% |  |
| 30 | Informationsbeschaffung |  |  | 30% → 75% |  |
| 32 | Bild erzeugen |  | 2016-12-15 A | 65% → 100% | 11.38d → none |
| 33 | Bild auswerten |  |  | 30% → 50% | 2.08d → 339d |
| 34 | Bild versenden |  | 2017-02-08 A | 5% → 100% | 204d → none |
| 40 | Konfiguration |  |  | 58% → 70% | 246d → 16.93d |
| 41 | Updates |  |  | 60% → 70% | 246d → 16.93d |
| 42 | Fehlerbehebung |  |  | 60% → 70% | 246d → 16.93d |
| 44 | **Motoren** |  |  | 93% → 97% |  |
| 51 | **Ansteuerung** |  |  | 90% → 95% |  |
| 52 | Implementierung |  |  | 90% → 95% |  |
| 54 | Systemtest |  |  | 92% → 95% | 519d → 407.75d |
| 55 | Fehlerbehebung |  |  | 92% → 95% | 537d → 425.75d |
| 57 | **Mechanik** |  |  | 94% → 95% |  |
| 68 | Fehlerbehebung |  |  | 52% → 60% |  |
| 69 | Systemtest |  |  | 52% → 60% |  |
| 70 | **Elektronik** |  |  | 90% → 91% |  |
| 78 | Systemtest |  |  | 42% → 50% |  |
| 79 | Fehlerbehebung |  |  | 42% → 50% |  |
| 80 | **Kontrolle** | 2016-10-25 A |  | 0% → 3% |  |
| 81 | **Testen** | 2017-01-02 A |  | 0% → 2% |  |
| 86 | Testszenarien (Tauglichkeit) | 2017-03-31 A |  | 0% → 15% |  |
| 87 | Systemtest | 2017-03-20 A |  | 0% → 15% | 114d → 8.07d |
| 89 | **Prüfen** | 2016-10-25 A |  | 0% → 27% | 171d → 165d |
| 90 | Geschwindigkeitsprüfung | 2017-03-29 A |  | 0% → 5% | 120d → 11.38d |
| 91 | Belastungsprüfung | 2016-12-06 A |  | 0% → 15% |  |
| 92 | Stromprüfung | 2017-03-27 A |  | 0% → 10% | 114d → 1.98d |
| 93 | Spannungsprüfung | 2017-03-27 A |  | 0% → 10% | 114d → 1.98d |
| 94 | Sensorprüfung | 2017-02-09 A |  | 0% → 5% |  |
| 95 | Frame-Prüfung | 2016-10-25 A | 2016-10-26 A | 0% → 100% | 603d → none |
| 104 | Status-Quo | 2017-03-28 A | 2017-03-28 A | 0% → 100% |  |

## Version 7 (saved 2017-04-04)

Note of the change: Merge remote-tracking branch 'origin/master'

Last finish stays 2017-05-29. Complete tasks 46 → 45.

Changed:

| ID | Task | Start | Finish | Complete | Total float |
| --- | --- | --- | --- | --- | --- |
| 1 | **Projekt Dobby** |  |  | 67% → 73% |  |
| 2 | **App** |  |  | 80% → 84% |  |
| 10 | **Version 2** |  |  | 76% → 81% |  |
| 11 | Informationsbeschaffung |  |  | 85% → 90% |  |
| 12 | Grundgerüst |  |  | 95% → 97% |  |
| 17 | 3D Modell |  |  | 25% → 35% | 23.12d → 26.18d |
| 18 | Kamerabild Anzeige |  |  | 75% → 90% | 8.75d → 9d |
| 22 | **RaspberryPi** |  |  | 71% → 81% |  |
| 29 | **Object Tracking** |  |  | 62% → 85% |  |
| 30 | Informationsbeschaffung |  |  | 75% → 90% |  |
| 33 | Bild auswerten |  |  | 50% → 80% |  |
| 40 | Konfiguration |  |  | 70% → 80% |  |
| 41 | Updates |  |  | 70% → 80% |  |
| 42 | Fehlerbehebung |  |  | 70% → 80% |  |
| 54 | Systemtest |  |  | 95% → 97% | 407.75d → 408d |
| 55 | Fehlerbehebung |  |  | 95% → 97% | 425.75d → 426d |
| 57 | **Mechanik** |  |  | 95% → 98% |  |
| 68 | Fehlerbehebung |  |  | 60% → 85% |  |
| 69 | Systemtest |  |  | 60% → 85% |  |
| 70 | **Elektronik** |  |  | 91% → 93% |  |
| 73 | **Montage** |  |  | 99% → 98% |  |
| 74 | Reihenklemmen |  | 2016-06-27 A → 2016-06-27 | 100% → 95% | none → 5.9d |
| 78 | Systemtest |  |  | 50% → 65% |  |
| 79 | Fehlerbehebung |  |  | 50% → 65% |  |
| 80 | **Kontrolle** |  |  | 3% → 4% |  |
| 86 | Testszenarien (Tauglichkeit) |  |  | 15% → 20% | 120d → 2.02d |
| 87 | Systemtest |  |  | 15% → 20% | 8.07d → 8.28d |
| 89 | **Prüfen** |  |  | 27% → 33% | 165d → 12d |
| 90 | Geschwindigkeitsprüfung |  |  | 5% → 10% | 11.38d → 12d |
| 91 | Belastungsprüfung |  |  | 15% → 20% | 471d → 2.02d |
| 92 | Stromprüfung |  |  | 10% → 20% | 1.98d → 2.08d |
| 93 | Spannungsprüfung |  |  | 10% → 20% | 1.98d → 2.08d |
| 96 | **Messen** | 2016-12-07 A |  | 0% → 5% |  |
| 97 | Terrainunterschiede | 2017-04-14 A |  | 0% → 5% |  |
| 98 | Sensorgenauigkeit | 2017-02-10 A |  | 0% → 5% |  |
| 99 | Belastungsmessung | 2016-12-07 A |  | 0% → 5% |  |

## Version 8 (saved 2017-04-11)

Note of the change: Update der Projektplanung

Last finish stays 2017-05-29. Complete tasks 45 → 46.

Changed:

| ID | Task | Start | Finish | Complete | Total float |
| --- | --- | --- | --- | --- | --- |
| 1 | **Projekt Dobby** |  |  | 73% → 79% |  |
| 2 | **App** |  |  | 84% → 87% |  |
| 10 | **Version 2** |  |  | 81% → 84% |  |
| 11 | Informationsbeschaffung |  |  | 90% → 95% |  |
| 12 | Grundgerüst |  |  | 97% → 98% |  |
| 22 | **RaspberryPi** |  |  | 81% → 91% |  |
| 23 | **Sensor** |  | 2016-11-09 A → 2016-11-09 | 100% → 97% | none → 561d |
| 27 | Werte auswerten |  | 2016-05-05 A → 2016-05-05 | 100% → 90% | none → 900d |
| 29 | **Object Tracking** |  | 2017-02-08 A | 85% → 100% | 321d → none |
| 30 | Informationsbeschaffung |  | 2016-12-09 A | 90% → 100% | 471d → none |
| 33 | Bild auswerten |  | 2017-02-02 A | 80% → 100% | 339d → none |
| 40 | Konfiguration |  |  | 80% → 90% | 16.93d → 17.18d |
| 41 | Updates |  |  | 80% → 90% | 16.93d → 17.18d |
| 42 | Fehlerbehebung |  |  | 80% → 90% | 16.93d → 17.18d |
| 44 | **Motoren** |  |  | 97% → 98% |  |
| 51 | **Ansteuerung** |  |  | 95% → 97% |  |
| 52 | Implementierung |  |  | 95% → 97% |  |
| 54 | Systemtest |  |  | 97% → 99% | 408d → 410.38d |
| 55 | Fehlerbehebung |  |  | 97% → 99% | 426d → 428.38d |
| 57 | **Mechanik** |  |  | 98% → 99% |  |
| 68 | Fehlerbehebung |  |  | 85% → 99% |  |
| 69 | Systemtest |  |  | 85% → 99% |  |
| 70 | **Elektronik** |  |  | 93% → 95% |  |
| 72 | Materialauslegung |  |  | 96% → 99% |  |
| 80 | **Kontrolle** |  |  | 4% → 8% |  |
| 81 | **Testen** |  |  | 2% → 5% |  |
| 82 | **App** | 2017-01-02 A |  | 0% → 2% |  |
| 83 | Cucumber | 2017-01-02 A |  | 0% → 5% |  |
| 87 | Systemtest |  |  | 20% → 30% | 8.28d → 8.6d |
| 89 | **Prüfen** |  |  | 33% → 40% |  |
| 91 | Belastungsprüfung |  |  | 20% → 30% | 2.02d → 2.33d |
| 92 | Stromprüfung |  |  | 20% → 30% |  |
| 93 | Spannungsprüfung |  |  | 20% → 30% |  |
| 94 | Sensorprüfung |  |  | 5% → 30% | 1.98d → 2.17d |
| 96 | **Messen** |  |  | 5% → 15% |  |
| 97 | Terrainunterschiede |  |  | 5% → 15% |  |
| 98 | Sensorgenauigkeit |  |  | 5% → 15% |  |
| 99 | Belastungsmessung |  |  | 5% → 15% |  |

## Version 9 (saved 2017-04-24)

Note of the change: Merge remote-tracking branch 'origin/master'

Last finish stays 2017-05-29. Complete tasks 46 → 58.

Changed:

| ID | Task | Start | Finish | Complete | Total float |
| --- | --- | --- | --- | --- | --- |
| 1 | **Projekt Dobby** |  |  | 79% → 84% |  |
| 2 | **App** |  |  | 87% → 94% |  |
| 10 | **Version 2** |  |  | 84% → 93% |  |
| 11 | Informationsbeschaffung |  | 2017-03-10 A | 95% → 100% | 231d → none |
| 12 | Grundgerüst |  | 2016-12-22 A | 98% → 100% | 452.12d → none |
| 17 | 3D Modell |  |  | 35% → 60% | 26.18d → 237d |
| 18 | Kamerabild Anzeige |  | 2017-03-17 A | 90% → 100% | 11.38d → none |
| 22 | **RaspberryPi** |  |  | 91% → 98% |  |
| 23 | **Sensor** |  |  | 97% → 99% |  |
| 27 | Werte auswerten |  |  | 90% → 98% |  |
| 40 | Konfiguration |  |  | 90% → 98% |  |
| 41 | Updates |  |  | 90% → 98% |  |
| 42 | Fehlerbehebung |  |  | 90% → 98% |  |
| 44 | **Motoren** |  | 2016-10-24 A | 98% → 100% | 609d → none |
| 51 | **Ansteuerung** |  | 2016-10-24 A | 97% → 100% | 609d → none |
| 52 | Implementierung |  | 2016-10-07 A | 97% → 100% | 660d → none |
| 54 | Systemtest |  | 2016-10-24 A | 99% → 100% | 410.38d → none |
| 55 | Fehlerbehebung |  | 2016-10-18 A | 99% → 100% | 428.38d → none |
| 56 | Motoren abgeschlossen | 2016-10-24 A | 2016-10-24 A | 0% → 100% | 520.88d → none |
| 57 | **Mechanik** |  | 2016-12-12 A | 99% → 100% | 462d → none |
| 68 | Fehlerbehebung |  | 2016-12-12 A | 99% → 100% | 462d → none |
| 69 | Systemtest |  | 2016-12-12 A | 99% → 100% | 462d → none |
| 70 | **Elektronik** |  |  | 95% → 98% |  |
| 72 | Materialauslegung |  | 2016-06-24 A | 99% → 100% | 8.95d → none |
| 73 | **Montage** |  | 2016-07-05 A | 98% → 100% | 717d → none |
| 74 | Reihenklemmen |  | 2016-06-27 A | 95% → 100% | 5.9d → none |
| 75 | Verdrahtung |  | 2016-06-29 A | 95% → 100% | 735d → none |
| 78 | Systemtest |  |  | 65% → 85% |  |
| 79 | Fehlerbehebung |  |  | 65% → 85% |  |

## Version 10 (saved 2017-05-04)

Note of the change: Update der Projektplanung

Last finish stays 2017-05-29. Complete tasks 58 → 66.

Changed:

| ID | Task | Start | Finish | Complete | Total float |
| --- | --- | --- | --- | --- | --- |
| 1 | **Projekt Dobby** |  |  | 84% → 87% |  |
| 2 | **App** |  | 2017-03-17 A | 94% → 100% | 210d → none |
| 10 | **Version 2** |  | 2017-03-17 A | 93% → 100% | 210d → none |
| 17 | 3D Modell |  | 2017-03-08 A | 60% → 100% | 237d → none |
| 21 | App abgeschlossen | 2017-03-17 A | 2017-03-17 A | 0% → 100% | 121.88d → none |
| 22 | **RaspberryPi** |  | 2017-02-08 A | 98% → 100% | 321d → none |
| 23 | **Sensor** |  | 2016-11-09 A | 99% → 100% | 561d → none |
| 27 | Werte auswerten |  | 2016-05-05 A | 98% → 100% | 900d → none |
| 40 | Konfiguration |  | 2017-02-03 A | 98% → 100% | 17.18d → none |
| 41 | Updates |  | 2017-02-03 A | 98% → 100% | 17.18d → none |
| 42 | Fehlerbehebung |  | 2017-02-03 A | 98% → 100% | 17.18d → none |
| 43 | RaspberryPi abgeschlossen | 2017-02-08 A | 2017-02-08 A | 0% → 100% | 232.88d → none |
| 70 | **Elektronik** |  |  | 98% → 99% |  |
| 78 | Systemtest |  |  | 85% → 95% |  |
| 79 | Fehlerbehebung |  |  | 85% → 95% |  |
| 80 | **Kontrolle** |  |  | 8% → 14% |  |
| 81 | **Testen** |  |  | 5% → 8% |  |
| 86 | Testszenarien (Tauglichkeit) |  |  | 20% → 55% | 2.33d → 5.65d |
| 87 | Systemtest |  |  | 30% → 55% | 8.6d → 10.97d |
| 89 | **Prüfen** |  |  | 40% → 64% | 12d → 23.38d |
| 90 | Geschwindigkeitsprüfung |  |  | 10% → 55% | 12d → 23.38d |
| 91 | Belastungsprüfung |  |  | 30% → 55% | 2.33d → 5.65d |
| 92 | Stromprüfung |  |  | 30% → 55% | 2.08d → 4.97d |
| 93 | Spannungsprüfung |  |  | 30% → 55% | 2.08d → 4.97d |
| 94 | Sensorprüfung |  |  | 30% → 55% | 2.17d → 10.97d |
| 96 | **Messen** |  |  | 15% → 55% |  |
| 97 | Terrainunterschiede |  |  | 15% → 55% |  |
| 98 | Sensorgenauigkeit |  |  | 15% → 55% |  |
| 99 | Belastungsmessung |  |  | 15% → 55% |  |
| 100 | **Dokumentation** |  |  | 23% → 27% |  |
| 102 | Schriftliche Ausarbeitung |  |  | 21% → 25% |  |
| 105 | Projektabschluss | 2017-04-15 A | 2017-04-15 A | 0% → 100% |  |

## Version 11 (saved 2017-05-10)

Note of the change: Update der Projektplanung

Last finish stays 2017-05-29. Complete tasks 66 → 82.

Changed:

| ID | Task | Start | Finish | Complete | Total float |
| --- | --- | --- | --- | --- | --- |
| 1 | **Projekt Dobby** |  |  | 87% → 98% |  |
| 70 | **Elektronik** |  | 2016-12-12 A | 99% → 100% | 462d → none |
| 78 | Systemtest |  | 2016-12-12 A | 95% → 100% | 462d → none |
| 79 | Fehlerbehebung |  | 2016-12-12 A | 95% → 100% | 462d → none |
| 80 | **Kontrolle** |  | 2017-04-17 A | 14% → 100% | 117d → none |
| 81 | **Testen** |  | 2017-04-13 A | 8% → 100% | 129d → none |
| 82 | **App** |  | 2017-03-22 A | 2% → 100% | 195d → none |
| 83 | Cucumber |  | 2017-03-14 A | 5% → 100% | 219d → none |
| 84 | Monkey | 2017-03-20 A | 2017-03-22 A | 0% → 100% | 195d → none |
| 85 | Unit Test | 2017-01-02 A | 2017-03-14 A | 0% → 100% | 219d → none |
| 86 | Testszenarien (Tauglichkeit) |  | 2017-04-13 A | 55% → 100% | 5.65d → none |
| 87 | Systemtest |  | 2017-03-24 A | 55% → 100% | 10.97d → none |
| 88 | RaspberryPi | 2017-02-09 A | 2017-02-22 A | 0% → 100% | 279d → none |
| 89 | **Prüfen** |  | 2017-03-30 A | 64% → 100% | 23.38d → none |
| 90 | Geschwindigkeitsprüfung |  | 2017-03-30 A | 55% → 100% | 23.38d → none |
| 91 | Belastungsprüfung |  | 2016-12-06 A | 55% → 100% | 5.65d → none |
| 92 | Stromprüfung |  | 2017-03-28 A | 55% → 100% | 4.97d → none |
| 93 | Spannungsprüfung |  | 2017-03-28 A | 55% → 100% | 4.97d → none |
| 94 | Sensorprüfung |  | 2017-02-09 A | 55% → 100% | 10.97d → none |
| 96 | **Messen** |  | 2017-04-17 A | 55% → 100% | 117d → none |
| 97 | Terrainunterschiede |  | 2017-04-17 A | 55% → 100% | 117d → none |
| 98 | Sensorgenauigkeit |  | 2017-02-13 A | 55% → 100% | 306d → none |
| 99 | Belastungsmessung |  | 2016-12-09 A | 55% → 100% | 471d → none |
| 100 | **Dokumentation** |  |  | 27% → 61% |  |
| 102 | Schriftliche Ausarbeitung |  |  | 25% → 60% |  |

## Version 12 (saved 2017-05-24)

Note of the change: Final MS Project

Last finish stays 2017-05-29. Complete tasks 82 → 85.

Changed:

| ID | Task | Start | Finish | Complete | Total float |
| --- | --- | --- | --- | --- | --- |
| 1 | **Projekt Dobby** |  | 2017-05-29 A | 98% → 100% | 0d → none |
| 100 | **Dokumentation** |  | 2017-05-29 A | 61% → 100% | 0d → none |
| 102 | Schriftliche Ausarbeitung |  | 2017-04-28 A | 60% → 100% | 84d → none |
| 106 | Abgabe Studienarbeit | 2017-05-15 A | 2017-05-15 A | 0% → 100% |  |
| 107 | Notenabgabe Studienarbeit | 2017-05-29 A | 2017-05-29 A | 0% → 100% |  |
